# Bouwplanning v1.0

Schedule from an IFC model, 2027-03-01 to 2027-09-18.
Brugvervanging N279

## Schedule

| ID | Activity | Type | Duration | Start | Finish | Predecessors | Planned start | Planned finish | Total float | Free float |
| --- | --- | --- | --- | --- | --- | --- | --- | --- | --- | --- |
| 1 | **1. Voorbereiding & Omleidingen** |  | 5d | 2027-03-01 | 2027-03-25 |  | 2027-03-01 | 2027-03-05 | 0d |  |
| 1.1 | Verkeersmaatregelen instellen |  | 5d | 2027-03-01 | 2027-03-05 |  |  |  | 0d |  |
| 1.2 | Tijdelijke omleidingsroute |  | 8d | 2027-03-06 | 2027-03-15 | 1.1 | 2027-03-01 | 2027-03-10 | 128d | 0d |
| 1.3 | Bouwplaats inrichten |  | 5d | 2027-03-16 | 2027-03-20 | 1.2 | 2027-03-01 | 2027-03-05 | 128d | 0d |
| 1.4 | Vaarbeperkingen instellen |  | 3d | 2027-03-22 | 2027-03-24 | 1.3 | 2027-03-01 | 2027-03-03 | 128d | 0d |
| 1.5 | Start werkzaamheden | milestone | 0d | 2027-03-25 | 2027-03-25 | 1.4 | 2027-03-01 | 2027-03-01 | 128d |  |
| 2 | **2. Sloop oude brug** |  | 5d | 2027-03-13 | 2027-04-28 |  | 2027-03-01 | 2027-03-05 | 0d |  |
| 2.1 | Leidingen omleggen |  | 8d | 2027-03-13 | 2027-03-22 | 1.1 SS+11d | 2027-03-01 | 2027-03-10 | 0d |  |
| 2.2 | Asfalt verwijderen |  | 3d | 2027-03-23 | 2027-03-25 | 2.1 | 2027-03-01 | 2027-03-03 | 102d | 0d |
| 2.3 | Brugleuningen demonteren |  | 3d | 2027-03-27 | 2027-03-31 | 2.2 | 2027-03-01 | 2027-03-03 | 102d | 0d |
| 2.4 | Brugdek slopen |  | 10d | 2027-04-01 | 2027-04-12 | 2.3 | 2027-03-01 | 2027-03-12 | 102d | 0d |
| 2.5 | Landhoofden slopen |  | 8d | 2027-04-13 | 2027-04-21 | 2.4 | 2027-03-01 | 2027-03-10 | 102d | 0d |
| 2.6 | Puin afvoeren |  | 5d | 2027-04-22 | 2027-04-28 | 2.5 | 2027-03-01 | 2027-03-05 | 102d |  |
| 3 | **3. Fundering nieuw** |  | 5d | 2027-03-17 | 2027-05-07 |  | 2027-03-01 | 2027-03-05 | 0d |  |
| 3.1 | Damwanden slaan |  | 10d | 2027-03-17 | 2027-03-30 | 2.1 SS | 2027-03-01 | 2027-03-12 | 0d |  |
| 3.2 | Onderwaterbeton |  | 8d | 2027-03-31 | 2027-04-08 | 3.1 | 2027-03-01 | 2027-03-10 | 0d |  |
| 3.3 | Droogzetten bouwkuip |  | 5d | 2027-04-09 | 2027-04-14 | 3.2 | 2027-03-01 | 2027-03-05 | 0d |  |
| 3.4 | Paalfundering boren |  | 12d | 2027-04-15 | 2027-04-29 | 3.3 | 2027-03-01 | 2027-03-16 | 0d |  |
| 3.5 | Grondverbetering |  | 5d | 2027-04-30 | 2027-05-07 | 3.4 | 2027-03-01 | 2027-03-05 | 0d |  |
| 4 | **4. Betonconstructie** |  | 5d | 2027-04-26 | 2027-07-17 |  | 2027-03-01 | 2027-03-05 | 0d |  |
| 4.1 | Landhoofd west wapenen en storten |  | 15d | 2027-04-26 | 2027-05-15 | 3.5 FS-8d | 2027-03-01 | 2027-03-19 | 0d |  |
| 4.2 | Landhoofd oost wapenen en storten |  | 15d | 2027-05-03 | 2027-05-22 | 4.1 SS+5d | 2027-03-01 | 2027-03-19 | 0d |  |
| 4.3 | Pijler midden storten |  | 10d | 2027-05-24 | 2027-06-03 | 4.2 | 2027-03-01 | 2027-03-12 | 0d |  |
| 4.4 | Prefab liggers plaatsen |  | 8d | 2027-06-04 | 2027-06-12 | 4.3 | 2027-03-01 | 2027-03-10 | 0d |  |
| 4.5 | Brugdek wapening |  | 10d | 2027-06-14 | 2027-06-24 | 4.4 | 2027-03-01 | 2027-03-12 | 0d |  |
| 4.6 | Brugdek storten |  | 5d | 2027-06-25 | 2027-06-30 | 4.5 | 2027-03-01 | 2027-03-05 | 0d |  |
| 4.7 | Uitharding beton |  | 15d | 2027-07-01 | 2027-07-17 | 4.6, 3.5 FF+2d | 2027-03-01 | 2027-03-19 | 0d |  |

| ID | Activity | Type | Duration | Start | Finish | Predecessors | Planned start | Planned finish | Total float |
| --- | --- | --- | --- | --- | --- | --- | --- | --- | --- |
| 5 | **5. Afwerking** |  | 5d | 2027-07-19 | 2027-09-04 |  | 2027-03-01 | 2027-03-05 | 0d |
| 5.1 | Brugleuningen monteren |  | 5d | 2027-07-19 | 2027-07-23 | 4.7 | 2027-03-01 | 2027-03-05 | 0d |
| 5.2 | Waterdichting brugdek |  | 5d | 2027-07-24 | 2027-08-19 | 5.1 | 2027-03-01 | 2027-03-05 | 0d |
| 5.3 | Asfalt brugdek |  | 3d | 2027-08-20 | 2027-08-23 | 5.2 | 2027-03-01 | 2027-03-03 | 0d |
| 5.4 | Asfalt aansluitingen |  | 5d | 2027-08-24 | 2027-08-28 | 5.3 | 2027-03-01 | 2027-03-05 | 0d |
| 5.5 | Verlichting |  | 3d | 2027-08-30 | 2027-09-01 | 5.4 | 2027-03-01 | 2027-03-03 | 0d |
| 5.6 | Geleiderail |  | 3d | 2027-09-02 | 2027-09-04 | 5.5 | 2027-03-01 | 2027-03-03 | 0d |
| 6 | **6. Oplevering** |  | 5d | 2027-09-06 | 2027-09-18 |  | 2027-03-01 | 2027-03-05 | 0d |
| 6.1 | Proefbelasting |  | 3d | 2027-09-06 | 2027-09-08 | 5.6 | 2027-03-01 | 2027-03-03 | 0d |
| 6.2 | Omleidingen opheffen |  | 3d | 2027-09-09 | 2027-09-11 | 6.1 | 2027-03-01 | 2027-03-03 | 0d |
| 6.3 | Bouwplaats opruimen |  | 5d | 2027-09-13 | 2027-09-17 | 6.2 | 2027-03-01 | 2027-03-05 | 0d |
| 6.4 | Openstelling brug | milestone | 0d | 2027-09-18 | 2027-09-18 | 6.3 | 2027-03-01 | 2027-03-01 | 0d |
